# Cronograma

Schedule from MS Project, 2008-10-03 to 2008-12-05, costs in R$, A marks actual dates.
versão 1.0
Target
Cronograma de atividades do projeto BPAD, elaborado pela equipe Target da disciplina Projeto Supervisionado de Analise do curso de Analise e Desenvolvimento de Sistemas da Unibratec-PB.

## Calendars

- Standard: Mon-Fri 08:00-12:00, 13:00-17:00; Sat-Sun off. Exceptions (off unless hours are given): 2008-10-04 08:00-12:00, 13:00-17:00, 2008-11-22 08:00-12:00, 13:00-17:00.

## Resources

| Resource | Rate |
| --- | --- |
| George Melo | 30 |
| Antonio Carlos | 30 |
| Leszek Trajano | 30 |
| Humberto Marques | 30 |

## Schedule

| ID | WBS | Task | Type | Duration | Start | Finish | Predecessors | Complete | Remaining | Total slack | Free slack | Constraint | Resources | Work | Actual work | Cost | Actual cost |
| --- | --- | --- | --- | --- | --- | --- | --- | --- | --- | --- | --- | --- | --- | --- | --- | --- | --- |
| 1 | 1 | **BPAD** |  | 47d | 2008-10-03 08:00 A | 2008-12-05 08:00 |  | 5% | 44.73d | 12d |  |  |  | 593h | 30h | 17,790 | 900 |
| 2 | 1.1 | **Realese 1** |  | 15.12d | 2008-10-03 08:00 A | 2008-10-23 09:00 |  | 39% | 9.23d | 43.88d |  |  |  | 74h | 30h | 2,220 | 900 |
| 3 | 1.1.1 | Brainstorm Documentação |  | 1h | 2008-10-03 08:00 | 2008-10-03 09:00 |  |  |  | 58.88d |  | start no earlier than 2008-10-03 08:00 | Antonio Carlos | 1h |  | 30 |  |
| 4 | 1.1.2 | Publicar Cronograma no SVN |  | 1h | 2008-10-03 08:00 A | 2008-10-03 09:00 A |  | 100% |  |  |  | start no earlier than 2008-10-03 08:00 | George Melo | 1h | 1h | 30 | 30 |
| 5 | 1.1.3 | **Criação do Banco de Dados** |  | 0.38d | 2008-10-03 08:00 A | 2008-10-03 11:00 A |  | 100% |  |  |  |  |  | 3h | 3h | 90 | 90 |
| 6 | 1.1.3.1 | Script SQL |  | 2h | 2008-10-03 08:00 A | 2008-10-03 10:00 A |  | 100% |  |  |  | start no earlier than 2008-10-03 08:00 | Humberto Marques | 2h | 2h | 60 | 60 |
| 7 | 1.1.3.2 | Popular Tabelas Auxiliares ao Banco |  | 1h | 2008-10-03 10:00 A | 2008-10-03 11:00 A | 6 | 100% |  |  |  |  | Humberto Marques | 1h | 1h | 30 | 30 |
| 8 | 1.1.4 | Modelo de Navegação |  | 2h | 2008-10-03 08:00 A | 2008-10-03 10:00 A |  | 100% |  |  |  | start no earlier than 2008-10-03 08:00 | Antonio Carlos | 2h | 2h | 60 | 60 |
| 9 | 1.1.5 | Criação de Protótipo de Interface |  | 16h | 2008-10-06 08:00 A | 2008-10-07 17:00 A |  | 100% |  |  |  | finish no earlier than 2008-10-07 17:00 | George Melo | 16h | 16h | 480 | 480 |
| 10 | 1.1.6 | **Implementação dos Casos de Uso Mobile** |  | 1d | 2008-10-08 08:00 A | 2008-10-08 17:00 A |  | 100% |  |  |  |  |  | 8h | 8h | 240 | 240 |
| 11 | 1.1.6.1 | Efetuar Login |  | 8h | 2008-10-08 08:00 A | 2008-10-08 17:00 A | 7, 9 | 100% |  |  |  | start no earlier than 2008-10-08 08:00 | George Melo | 8h | 8h | 240 | 240 |
| 12 | 1.1.7 | **Implementação dos Casos de Uso Web** |  | 4.62d | 2008-10-04 11:00 | 2008-10-09 17:00 |  |  |  | 8d |  |  |  | 37h |  | 1,110 |  |
| 13 | 1.1.7.1 | Efetuar Login |  | 13h | 2008-10-04 11:00 | 2008-10-06 17:00 | 7 |  |  | 8d | 0d | finish no earlier than 2008-10-06 17:00 | Leszek Trajano | 13h |  | 390 |  |
| 14 | 1.1.7.2 | Cadastrar Unidade de Saude |  | 8h | 2008-10-07 08:00 | 2008-10-07 17:00 | 13 |  |  | 50.75d | 0d | finish no earlier than 2008-10-07 17:00 | Leszek Trajano | 8h |  | 240 |  |
| 15 | 1.1.7.3 | Atualizar Unidade de Saude |  | 8h | 2008-10-08 08:00 | 2008-10-08 17:00 | 14 |  |  | 50.75d | 0d | finish no earlier than 2008-10-08 17:00 | Humberto Marques | 8h |  | 240 |  |
| 16 | 1.1.7.4 | Consultar Unidade de Saude |  | 8h | 2008-10-09 08:00 | 2008-10-09 17:00 | 15 |  |  | 50.75d | 0d | finish no earlier than 2008-10-09 17:00 | Leszek Trajano | 8h |  | 240 |  |
| 17 | 1.1.8 | Homologação da release |  | 4h | 2008-10-16 08:00 | 2008-10-16 12:00 | 7, 11, 16 |  |  | 4d | 0d | start no earlier than 2008-10-16 08:00 | Humberto Marques | 4h |  | 120 |  |
| 18 | 1.1.9 | Criação da apresentação da realese 1 |  | 2h | 2008-10-21 08:00 | 2008-10-21 10:00 | 17 |  |  | 12.5d | 0.75d | start no earlier than 2008-10-21 08:00 | George Melo | 2h |  | 60 |  |
| 19 | 1.1.10 | Reunião de acompanhamento |  | 2h | 2008-10-22 08:00 | 2008-10-22 10:00 | 18 |  |  | 11.75d | 0.75d | start no earlier than 2008-10-22 08:00 |  |  |  |  |  |
| 20 | 1.1.11 | Entrega da realese 1 (Apresentção) |  | 1h | 2008-10-23 08:00 | 2008-10-23 09:00 | 18, 19 |  |  | 11d | 0d | start no earlier than 2008-10-23 08:00 |  |  |  |  |  |
| 21 | 1.1.12 | Final da realese 1 | milestone | 0d | 2008-10-23 09:00 | 2008-10-23 09:00 | 20 |  |  | 11d | 0d | start no earlier than 2008-10-17 08:00 |  |  |  |  |  |
| 22 | 1.2 | **Realese 2** |  | 9.88d | 2008-10-23 09:00 | 2008-11-06 08:00 | 21 |  |  | 11d |  |  |  | 312h |  | 9,360 |  |
| 23 | 1.2.1 | **Implementação dos Casos de Uso Mobile** |  | 5.12d | 2008-10-23 09:00 | 2008-10-30 10:00 |  |  |  | 21.25d |  |  |  | 128h |  | 3,840 |  |
| 24 | 1.2.1.1 | Cadastrar Paciente |  | 32h | 2008-10-23 09:00 | 2008-10-29 09:00 |  |  |  | 22.12d | 0d | finish no earlier than 2008-10-23 17:00 | George Melo | 32h |  | 960 |  |
| 25 | 1.2.1.2 | Consultar Paciente |  | 32h | 2008-10-23 09:00 | 2008-10-29 09:00 | 24SS |  |  | 22.12d | 0d | finish no earlier than 2008-10-23 17:00 | Antonio Carlos | 32h |  | 960 |  |
| 26 | 1.2.1.3 | Atualizar Paciente |  | 32h | 2008-10-23 09:00 | 2008-10-29 09:00 | 25SS |  |  | 22.38d | 0d | finish no earlier than 2008-10-23 17:00 | Leszek Trajano | 32h |  | 960 |  |
| 27 | 1.2.1.4 | Preencher Ficha Diária |  | 32h | 2008-10-23 09:00 | 2008-10-29 09:00 | 26SS |  |  | 22.12d | 0.88d | finish no earlier than 2008-10-23 17:00 | Humberto Marques | 32h |  | 960 |  |
| 28 | 1.2.1.5 | Reunião de acompanhamento |  | 2h | 2008-10-30 08:00 | 2008-10-30 10:00 | 24, 25, 27 |  |  | 21.25d |  | start no earlier than 2008-10-30 08:00 |  |  |  |  |  |

| ID | WBS | Task | Type | Duration | Start | Finish | Predecessors | Total slack | Free slack | Constraint | Resources | Work | Cost |
| --- | --- | --- | --- | --- | --- | --- | --- | --- | --- | --- | --- | --- | --- |
| 29 | 1.2.2 | **Implementação dos Casos de Uso Web** |  | 6.5d | 2008-10-23 09:00 | 2008-10-31 14:00 |  | 11d |  |  |  | 184h | 5,520 |
| 30 | 1.2.2.1 | Cadastrar Paciente |  | 16h | 2008-10-23 09:00 | 2008-10-27 09:00 |  | 2d |  |  | Humberto Marques | 16h | 480 |
| 31 | 1.2.2.2 | Atualizar Paciente |  | 24h | 2008-10-23 09:00 | 2008-10-28 09:00 |  | 1d |  |  | Humberto Marques | 24h | 720 |
| 32 | 1.2.2.3 | Consultar Paciente |  | 32h | 2008-10-23 09:00 | 2008-10-29 09:00 |  | 11d | 0d |  | Humberto Marques | 32h | 960 |
| 33 | 1.2.2.4 | Cadastrar Profissional de Saude |  | 32h | 2008-10-23 09:00 | 2008-10-29 09:00 |  | 11d | 0d |  | George Melo | 32h | 960 |
| 34 | 1.2.2.5 | Atualizar Profissional de Saude |  | 32h | 2008-10-23 09:00 | 2008-10-29 09:00 |  | 11d | 0d |  | Antonio Carlos | 32h | 960 |
| 35 | 1.2.2.6 | Consultar Profissional de Saude |  | 32h | 2008-10-23 09:00 | 2008-10-29 09:00 |  | 11d | 0d |  | Leszek Trajano | 32h | 960 |
| 36 | 1.2.2.7 | Homologação da release |  | 8h | 2008-10-29 09:00 | 2008-10-30 09:00 | 35, 30, 31, 32, 33, 34 | 11d | 0d |  | George Melo | 8h | 240 |
| 37 | 1.2.2.8 | Criação da apresentação da release 2 |  | 8h | 2008-10-30 09:00 | 2008-10-31 09:00 | 36 | 11d | 0d |  | Antonio Carlos | 8h | 240 |
| 38 | 1.2.2.9 | Reunião de acompanhamento |  | 2h | 2008-10-31 09:00 | 2008-10-31 11:00 | 37 | 11d | 0d |  |  |  |  |
| 39 | 1.2.2.10 | Entrega da Realese 2 (Apresentação) |  | 2h | 2008-10-31 11:00 | 2008-10-31 14:00 | 38 | 11d | 3.38d |  |  |  |  |
| 40 | 1.2.3 | Final Realese 2 | milestone | 0d | 2008-11-06 08:00 | 2008-11-06 08:00 | 39 | 7.62d | 0d | start no earlier than 2008-11-06 08:00 |  |  |  |
| 41 | 1.3 | **Realese 3** |  | 11.88d | 2008-11-06 08:00 | 2008-11-21 16:00 | 40 | 7.62d |  |  |  | 175h | 5,250 |
| 42 | 1.3.1 | **Implementação dos Casos de Uso Mobile** |  | 6.62d | 2008-11-06 08:00 | 2008-11-14 14:00 |  | 7.62d | 4.25d |  |  | 75h | 2,250 |
| 43 | 1.3.1.1 | Atualizar Ficha Diária |  | 8h | 2008-11-06 08:00 | 2008-11-06 17:00 |  | 7.62d | 0d |  | Leszek Trajano | 8h | 240 |
| 44 | 1.3.1.2 | Consultar Ficha Diária |  | 8h | 2008-11-06 08:00 | 2008-11-06 17:00 | 43SS | 7.62d | 0d |  | George Melo | 8h | 240 |
| 45 | 1.3.1.3 | Sincronizar Dados com Servidor |  | 51h | 2008-11-06 08:00 | 2008-11-14 11:00 | 44SS | 7.62d | 0d |  | Antonio Carlos | 51h | 1,530 |
| 46 | 1.3.1.4 | Popular Banco de Dados no Servidor |  | 8h | 2008-11-06 08:00 | 2008-11-06 17:00 | 45SS | 13d | 5.38d |  | Humberto Marques | 8h | 240 |
| 47 | 1.3.1.5 | Reunião de Acompanhamento |  | 2h | 2008-11-14 11:00 | 2008-11-14 14:00 | 43, 44, 45, 46 | 7.62d | 0d |  |  |  |  |
| 48 | 1.3.2 | **Implementação dos Casos de Uso Web** |  | 4.25d | 2008-11-14 14:00 | 2008-11-20 16:00 | 47 | 7.62d | 0d |  |  | 96h | 2,880 |
| 49 | 1.3.2.1 | Consolidar BPA |  | 32h | 2008-11-14 14:00 | 2008-11-20 14:00 |  | 7.62d | 0d |  | Humberto Marques | 32h | 960 |
| 50 | 1.3.2.2 | Gerar Relatório |  | 32h | 2008-11-14 14:00 | 2008-11-20 14:00 | 49SS | 7.62d | 0d |  | Leszek Trajano | 32h | 960 |
| 51 | 1.3.2.3 | Sincronizar Dispositivel Móvel |  | 32h | 2008-11-14 14:00 | 2008-11-20 14:00 | 50SS | 7.62d | 0d |  | Antonio Carlos | 32h | 960 |
| 52 | 1.3.2.4 | Reunião de acompanhamento |  | 2h | 2008-11-20 14:00 | 2008-11-20 16:00 | 49, 50, 51 | 7.62d |  |  |  |  |  |
| 53 | 1.3.3 | Homologação da release |  | 2h | 2008-11-20 16:00 | 2008-11-21 09:00 | 42, 48 | 7.62d | 0d |  | George Melo | 2h | 60 |
| 54 | 1.3.4 | Criação da apresentação da release 3 |  | 2h | 2008-11-21 09:00 | 2008-11-21 11:00 | 53 | 7.62d | 0d |  | George Melo | 2h | 60 |
| 55 | 1.3.5 | Reunião de acompanhamento |  | 2h | 2008-11-21 11:00 | 2008-11-21 14:00 | 54 | 7.62d | 0d |  |  |  |  |
| 56 | 1.3.6 | Entrega da Realese 3 (Apresentação) |  | 2h | 2008-11-21 14:00 | 2008-11-21 16:00 | 55 | 7.62d | 0d |  |  |  |  |
| 57 | 1.3.7 | Final Realese 3 | milestone | 0d | 2008-11-21 16:00 | 2008-11-21 16:00 | 56 | 7.62d | 0d | start no earlier than 2008-11-21 08:00 |  |  |  |

| ID | WBS | Task | Type | Duration | Start | Finish | Predecessors | Total slack | Free slack | Constraint | Resources | Work | Cost |
| --- | --- | --- | --- | --- | --- | --- | --- | --- | --- | --- | --- | --- | --- |
| 58 | 1.4 | **Release 4** |  | 10.12d | 2008-11-21 16:00 | 2008-12-05 08:00 | 57 | 0d |  |  |  | 32h | 960 |
| 59 | 1.4.1 | Criação da apresentação final (Documentação) |  | 8h | 2008-11-21 16:00 | 2008-11-22 16:00 |  | 7.62d | 0d |  | George Melo | 8h | 240 |
| 60 | 1.4.2 | Criação da apresentação final (Diagramação) |  | 8h | 2008-11-21 16:00 | 2008-11-22 16:00 | 59SS | 7.62d | 0d |  | Antonio Carlos | 8h | 240 |
| 61 | 1.4.3 | Criação da apresentação final (Banco de Dados) |  | 8h | 2008-11-21 16:00 | 2008-11-22 16:00 | 60SS | 7.62d | 0d |  | Humberto Marques | 8h | 240 |
| 62 | 1.4.4 | Criação da apresentação final (Interfaces) |  | 8h | 2008-11-21 16:00 | 2008-11-22 16:00 | 61SS | 7.62d | 0d |  | Leszek Trajano | 8h | 240 |
| 63 | 1.4.5 | Reunião de acompanhamento |  | 2h | 2008-11-22 16:00 | 2008-11-24 09:00 | 62, 59, 60, 61 | 7.62d | 0d |  |  |  |  |
| 64 | 1.4.6 | Criação da apresentação final (Fusão) |  | 6h | 2008-11-24 09:00 | 2008-11-24 16:00 | 63, 59, 60, 61, 62 | 7.62d | 0d |  |  |  |  |
| 65 | 1.4.7 | Entrega da Realese 4 (Ensaio) |  | 4h | 2008-11-24 16:00 | 2008-11-25 11:00 | 64 | 7.62d |  |  |  |  |  |
| 66 | 1.4.8 | Final Realese 3 | milestone | 0d | 2008-12-05 08:00 | 2008-12-05 08:00 | 65 | 0d |  | start no earlier than 2008-12-05 08:00 |  |  |  |
